# SRA2021-G10-甘特图v0.1.2

Schedule from MS Project, 2021-03-09 to 2021-07-02, 2 hours a day, costs in ¥, A marks actual dates.

## Calendars

- 标准: Mon-Sun 10:00-12:00.

## Resources

| Resource | Rate |
| --- | --- |
| 朱邦杰 | 84.84 |
| 牛旷野 | 70.7 |
| 徐任 | 70.7 |
| 童峻涛 | 70.7 |
| 刘哲 | 70 |

## Schedule

| ID | WBS | Task | Type | Duration | Start | Finish | Predecessors | Complete | Remaining | Actual finish | Total slack | Resources | Work | Actual work | Cost | Actual cost | 负责人 | 输出 | 1 |
| --- | --- | --- | --- | --- | --- | --- | --- | --- | --- | --- | --- | --- | --- | --- | --- | --- | --- | --- | --- |
| 1 | 1 | **项目启动** |  | 2.5d | 2021-03-09 08:00 A | 2021-03-11 11:00 |  | 59% | 1.03d |  | 0d |  | 16.25h | 9.25h | 1,167.29 | 673.61 |  |  |  |
| 2 | 1.1 | 确定小组成员 | manual | 1h | 2021-03-09 08:00 A | 2021-03-09 09:00 A |  | 100% |  |  |  | 刘哲; 牛旷野; 童峻涛; 徐任; 朱邦杰 | 5h | 5h | 366.94 | 366.94 | 朱邦杰 | G10小组 |  |
| 3 | 1.2 | 确定选题 | manual | 2h | 2021-03-10 10:00 A | 2021-03-10 12:00 | 2 | 13% | 1.75h |  |  | 刘哲; 牛旷野; 童峻涛; 徐任; 朱邦杰 | 8h | 1h | 564.2 | 70.53 | 朱邦杰 | 选题 |  |
| 4 | 1.3 | 第一次会议 |  | 0.25h | 2021-03-11 08:00 A | 2021-03-11 08:15 A | 3 | 100% |  |  |  | 徐任; 刘哲; 牛旷野; 童峻涛; 朱邦杰 | 0.25h | 0.25h | 17.68 | 17.68 | 朱邦杰 | 会议纪要 |  |
| 5 | 1.4 | 软件资源配置 |  | 0.5h | 2021-03-11 10:00 A | 2021-03-11 10:30 A | 4 | 100% |  |  |  | 刘哲; 牛旷野; 童峻涛; 徐任; 朱邦杰 | 2.5h | 2.5h | 183.47 | 183.47 | 朱邦杰 | 小组环境安装完成 |  |
| 6 | 1.5 | logo设计 | manual | 0.5h | 2021-03-11 10:30 A | 2021-03-11 11:00 A | 3 | 100% |  |  |  | 刘哲 | 0.5h | 0.5h | 35 | 35 | 刘哲 | 小组logo |  |
| 7 | 2 | **项目计划** |  | 16d | 2021-03-11 08:00 A | 2021-03-26 12:00 | 1 | 99% | 0d |  | 0d |  | 79h | 73h | 5,785.93 | 5,363.13 |  |  |  |
| 8 | 2.1 | 确定分工 |  | 0.5h | 2021-03-11 08:00 A | 2021-03-11 08:30 A | 1 | 100% |  |  |  | 朱邦杰; 刘哲; 牛旷野; 童峻涛; 徐任 | 2.5h | 2.5h | 183.47 | 183.47 | 朱邦杰 |  | 朱邦杰 |
| 9 | 2.2 | 制作WBS图 | manual | 1h | 2021-03-12 08:00 A | 2021-03-12 09:00 A | 8FS+1d | 100% |  |  |  | 牛旷野 | 1h | 1h | 70.7 | 70.7 | 牛旷野 | WBS图 | 牛旷野 |
| 10 | 2.3 | 制作OBS图 |  | 1h | 2021-03-12 08:00 A | 2021-03-12 09:00 A | 8FS+1d | 100% |  |  |  | 童峻涛 | 1h | 1h | 70.7 | 70.7 | 童峻涛 | OBS图 | 童峻涛 |
| 11 | 2.4 | 找到模板 |  | 1h | 2021-03-12 08:00 A | 2021-03-12 09:00 A | 8FS+1d | 100% |  |  |  | 朱邦杰; 刘哲; 童峻涛; 徐任 | 4h | 4h | 296.24 | 296.24 | 朱邦杰 | 模板 | 朱邦杰 |
| 12 | 2.5 | 项目初步甘特图 | manual | 1h | 2021-03-12 08:00 A | 2021-03-12 09:00 A | 8FS+1d | 100% |  |  |  | 牛旷野 | 1h | 1h | 70.7 | 70.7 | 牛旷野 | 甘特图 | 牛旷野 |
| 13 | 2.6 | 小组环境配置 |  | 1h | 2021-03-12 08:00 A | 2021-03-12 11:00 A | 8FS+1d | 100% |  |  |  | 朱邦杰 | 1h | 1h | 84.84 | 84.84 | 徐任 | gitee仓库 | 徐任 |
| 14 | 2.7 | **可行性分析初步** |  | 1.8h | 2021-03-13 08:00 A | 2021-03-13 09:48 | 11FS+1d | 100% |  | 2021-03-13 10:12 |  |  | 8.2h | 8.2h | 606.62 | 606.62 | 朱邦杰 | 可行性分析 | 朱邦杰 |
| 15 | 2.7.1 | 模板1,2,3节 | manual | 1.8h | 2021-03-13 08:00 A | 2021-03-13 09:48 A | 11FS+1d | 100% |  |  |  | 徐任 | 1.8h | 1.8h | 127.26 | 127.26 | 徐任 | 任务文档 | 徐任 |
| 16 | 2.7.2 | 模板4,5节 | manual | 1.8h | 2021-03-13 08:00 A | 2021-03-13 09:48 A | 11FS+1d | 100% |  |  |  | 刘哲 | 1.8h | 1.8h | 126 | 126 | 刘哲 | 任务文档 | 刘哲 |
| 17 | 2.7.3 | 模板6,7,8节 | manual | 1.8h | 2021-03-13 08:00 A | 2021-03-13 09:48 A | 11FS+1d | 100% |  |  |  | 童峻涛 | 1.8h | 1.8h | 127.26 | 127.26 | 童峻涛 | 任务文档 | 童峻涛 |
| 18 | 2.7.4 | 剩余部分+审核 | manual | 1.8h | 2021-03-13 08:00 A | 2021-03-13 09:48 A | 11FS+1d | 100% |  |  |  | 朱邦杰 | 1.8h | 1.8h | 152.71 | 152.71 | 朱邦杰 | 完整文档 | 朱邦杰 |
| 19 | 2.7.5 | 第二次会议 | manual | 0.2h | 2021-03-13 10:00 A | 2021-03-13 10:12 A | 4FS+2d | 100% |  |  |  | 刘哲; 牛旷野; 童峻涛; 徐任; 朱邦杰 | 1h | 1h | 73.39 | 73.39 |  | 会议纪要 |  |
| 20 | 2.8 | **项目计划初步制定** |  | 1d | 2021-03-14 10:00 A | 2021-03-14 12:00 A | 14FS+1d | 100% |  |  |  |  | 10h | 10h | 733.88 | 733.88 | 朱邦杰 | 项目计划 | 朱邦杰 |
| 21 | 2.8.1 | 模板1,2,3节 | manual | 2h | 2021-03-14 10:00 A | 2021-03-14 12:00 A | 11 | 100% |  |  |  | 牛旷野 | 2h | 2h | 141.4 | 141.4 | 牛旷野 |  | 牛旷野 |
| 22 | 2.8.2 | 模板4,5节 | manual | 2h | 2021-03-14 10:00 A | 2021-03-14 12:00 A | 11 | 100% |  |  |  | 童峻涛 | 2h | 2h | 141.4 | 141.4 | 童峻涛 |  | 童峻涛 |
| 23 | 2.8.3 | 模板6,7节 | manual | 2h | 2021-03-14 10:00 A | 2021-03-14 12:00 A | 11 | 100% |  |  |  | 徐任 | 2h | 2h | 141.4 | 141.4 | 徐任 |  | 徐任 |
| 24 | 2.8.4 | 模板8,9节 | manual | 2h | 2021-03-14 10:00 A | 2021-03-14 12:00 A |  | 100% |  |  |  | 刘哲 | 2h | 2h | 140 | 140 | 刘哲 |  | 刘哲 |
| 25 | 2.8.5 | 剩余部分+审核 | manual | 2h | 2021-03-14 10:00 A | 2021-03-14 12:00 A | 11 | 100% |  |  |  | 朱邦杰 | 2h | 2h | 169.68 | 169.68 | 朱邦杰 |  | 朱邦杰 |
| 26 | 2.9 | 项目章程 | manual | 2h | 2021-03-15 10:00 A | 2021-03-15 12:00 A | 20FS+1d | 100% |  |  |  | 刘哲 | 2h | 2h | 140 | 140 | 刘哲 | 项目章程 | 刘哲 |
| 27 | 2.10 | 项目计划ppt | manual | 4h | 2021-03-16 10:00 A | 2021-03-17 12:00 | 20FS+2d | 99% | 0h |  |  | 童峻涛; 朱邦杰; 刘哲; 牛旷野; 徐任 | 10h | 4h | 733.88 | 311.08 | 童峻涛 | 项目计划ppt | 童峻涛 |
| 28 | 2.11 | 第三次会议 | manual | 2h | 2021-03-18 10:00 A | 2021-03-18 12:00 A | 19FS+5d | 100% |  |  |  | 刘哲; 牛旷野; 童峻涛; 徐任; 朱邦杰 | 10h | 10h | 733.88 | 733.88 | 朱邦杰 | 会议纪要 |  |

| ID | WBS | Task | Type | Duration | Start | Finish | Predecessors | Complete | Remaining | Actual start | Actual finish | Total slack | Constraint | Resources | Work | Actual work | Cost | Actual cost | 负责人 | 输出 | 1 |
| --- | --- | --- | --- | --- | --- | --- | --- | --- | --- | --- | --- | --- | --- | --- | --- | --- | --- | --- | --- | --- | --- |
| 29 | 2.12 | **UML概述** |  | 16h | 2021-03-19 10:00 A | 2021-03-26 12:00 | 20 | 100% |  |  | 2021-03-26 11:00 |  |  |  | 28.3h | 28.3h | 2,061.02 | 2,061.02 |  |  |  |
| 30 | 2.12.1 | 甘特图更新 | manual | 1h | 2021-03-19 10:00 A | 2021-03-19 12:00 A | 12FS+7d | 100% |  |  |  |  |  | 牛旷野 | 1h | 1h | 70.7 | 70.7 | 牛旷野 | 甘特图 | 牛旷野 |
| 31 | 2.12.2 | 翻转课堂 |  | 1.8h | 2021-03-20 10:00 A | 2021-03-20 11:48 A | 28FS+1d | 100% |  |  |  |  | start no earlier than 2021-03-20 10:00 | 朱邦杰; 刘哲; 牛旷野; 童峻涛; 徐任 | 9h | 9h | 660.49 | 660.49 | 朱邦杰 | 翻转课堂ppt | 朱邦杰 |
| 32 | 2.12.3 | 奶茶团建 | manual | 0.2h | 2021-03-20 10:00 A | 2021-03-20 10:12 A | 28FS+1d | 100% |  |  |  |  |  | 刘哲; 牛旷野; 童峻涛; 徐任; 朱邦杰 | 1h | 1h | 73.39 | 73.39 | 朱邦杰 | 团建总结 |  |
| 33 | 2.12.4 | 配置管理计划修改 | manual | 1h | 2021-03-21 11:00 A | 2021-03-21 12:00 A | 13FS+9d | 100% |  |  |  |  |  | 徐任 | 1h | 1h | 70.7 | 70.7 | 徐任 | 配置管理计划 | 徐任 |
| 34 | 2.12.5 | 第四次会议 | manual | 0.4h | 2021-03-21 10:00 A | 2021-03-21 10:24 A | 28FS+2d | 100% |  |  |  |  |  | 刘哲; 牛旷野; 童峻涛; 徐任; 朱邦杰 | 2h | 2h | 146.78 | 146.78 | 朱邦杰 | 会议纪要 |  |
| 35 | 2.12.6 | 项目章程修改 | manual | 1.8h | 2021-03-23 10:00 A | 2021-03-23 11:48 A | 26FS+7d | 100% |  |  |  |  |  | 刘哲 | 1.8h | 1.8h | 126 | 126 | 刘哲 | 项目章程 | 刘哲 |
| 36 | 2.12.7 | 第五次会议 | manual | 0.2h | 2021-03-23 10:24 A | 2021-03-23 10:36 A | 34FS+2d | 100% |  |  |  |  |  | 刘哲; 牛旷野; 童峻涛; 徐任; 朱邦杰 | 1h | 1h | 73.39 | 73.39 | 朱邦杰 | 会议纪要 |  |
| 37 | 2.12.8 | 第六次会议 | manual | 0.5h | 2021-03-25 10:00 A | 2021-03-25 10:30 A | 36FS+2d | 100% |  |  |  |  |  | 刘哲; 牛旷野; 童峻涛; 徐任; 朱邦杰 | 2.5h | 2.5h | 183.47 | 183.47 | 朱邦杰 | 会议纪要 |  |
| 38 | 2.12.9 | 项目章程再次修改 | manual | 0.5h | 2021-03-26 10:00 A | 2021-03-26 10:30 A | 35FS+2d | 100% |  |  |  |  |  | 刘哲 | 0.5h | 0.5h | 35 | 35 | 刘哲 | 项目章程 |  |
| 39 | 2.12.10 | 甘特图更新 | manual | 1h | 2021-03-26 10:00 A | 2021-03-26 11:00 A | 30FS+6d | 100% |  |  |  |  |  | 牛旷野 | 1h | 1h | 70.7 | 70.7 | 牛旷野 | 甘特图 |  |
| 40 | 2.12.11 | 需求工程项目计划评审 | manual | 1.5h | 2021-03-25 10:00 A | 2021-03-25 11:30 A | 33FS+1d, 35FS+1d | 100% |  |  |  |  |  | 刘哲; 牛旷野; 童峻涛; 徐任; 朱邦杰 | 7.5h | 7.5h | 550.41 | 550.41 | 朱邦杰 | 评审总结 |  |
| 41 | 3 | **项目实施** |  | 78d? | 2021-03-29 08:00 | 2021-06-13 12:00 | 7FS+2d | 97% | 2.73d? | 2021-03-29 10:00 |  |  |  |  | 301.9h | 282.9h | 22,088.54 | 20,694.17 |  |  |  |
| 42 | 3.1 | **需求开发** |  | 62d? | 2021-03-29 08:00 | 2021-05-29 12:00 | 7FS+2d | 95% | 2.85d? | 2021-03-29 10:00 |  | 0d |  |  | 236.4h | 218.4h | 17,279.58 | 15,958.6 |  |  |  |
| 43 | 3.1.1 | **需求获取** |  | 12.1d? | 2021-03-29 08:00 | 2021-04-10 10:12 | 7FS+2d | 83% | 2.08d? | 2021-03-29 10:00 |  | 0d |  |  | 58.6h | 47.1h | 4,303.52 | 3,459.55 |  |  |  |
| 44 | 3.1.1.1 | **UML工具:Rational Rose** |  | 9d? | 2021-03-29 08:00 | 2021-04-05 12:00 | 7FS+2d | 83% | 1.54d? | 2021-03-29 10:00 |  |  |  |  | 58.6h | 47.1h | 4,303.52 | 3,459.55 |  |  |  |
| 45 | 3.1.1.1.1 | 定义产品愿景和项目范围 | manual | 2h | 2021-03-29 10:00 A | 2021-03-29 12:00 A | 7FS+2d | 100% |  |  |  |  |  | 刘哲; 牛旷野; 童峻涛; 徐任; 朱邦杰 | 10h | 10h | 733.88 | 733.88 | 朱邦杰 | 相关文档 |  |
| 46 | 3.1.1.1.2 | 找用户代表获取需求（yc老师） | manual | 2h | 2021-03-31 10:00 A | 2021-03-31 12:00 | 45FS+1d | 10% | 1.8h |  |  |  |  | 刘哲; 牛旷野; 童峻涛; 徐任; 朱邦杰 | 10h | 1h | 733.88 | 73.39 | 朱邦杰 | 需求获取文档（但被驳回） |  |
| 47 | 3.1.1.1.3 | 识别用户类型及其特征 | manual | 1h | 2021-03-30 10:00 A | 2021-03-30 11:00 A | 45 | 100% |  |  |  |  |  | 刘哲; 牛旷野; 童峻涛; 徐任; 朱邦杰 | 5h | 5h | 366.94 | 366.94 | 刘哲 | 用户调研报告 |  |
| 48 | 3.1.1.1.4 | 为每类用户选出用户代表 | manual | 0.8h | 2021-03-30 11:00 A | 2021-03-30 11:48 A | 47 | 100% |  |  |  |  |  | 童峻涛; 朱邦杰 | 1.6h | 1.6h | 124.43 | 124.43 | 童峻涛 | 用户代表 |  |
| 49 | 3.1.1.1.5 | 第七次会议 | manual | 0.2h | 2021-04-01 10:30 A | 2021-04-01 10:42 A | 37FS+7d | 100% |  |  |  |  |  | 刘哲; 牛旷野; 童峻涛; 徐任; 朱邦杰 | 1h | 1h | 73.39 | 73.39 | 朱邦杰 | 会议纪要 |  |
| 50 | 3.1.1.1.6 | 甘特图更新 | manual | 1.5h | 2021-04-01 10:00 A | 2021-04-01 11:30 A | 39FS+5d | 100% |  |  |  |  |  | 牛旷野 | 1.5h | 1.5h | 106.05 | 106.05 | 牛旷野 | 甘特图 |  |
| 51 | 3.1.1.1.7 | 举办需求访谈 | manual | 0.2h | 2021-04-02 11:48 A | 2021-04-02 12:00 A | 47FS+3d, 48FS+3d | 100% |  |  |  |  |  | 刘哲; 牛旷野; 童峻涛; 徐任; 朱邦杰 | 1h | 1h | 73.39 | 73.39 | 童峻涛 | 访谈报告（邮件被杨枨老师驳回） |  |
| 52 | 3.1.1.1.8 | 翻转课堂 | manual | 0.2h | 2021-04-02 11:48 A | 2021-04-02 12:00 A | 31FS+13d | 100% |  |  |  |  |  | 刘哲; 牛旷野; 童峻涛; 徐任; 朱邦杰 | 1h | 1h | 73.39 | 73.39 | 朱邦杰 | 翻转课堂ppt |  |
| 53 | 3.1.1.1.9 | 第八次会议 | manual | 0.5h | 2021-04-05 10:42 A | 2021-04-05 11:12 A | 49FS+4d | 100% |  |  |  |  |  | 刘哲; 牛旷野; 童峻涛; 徐任; 朱邦杰 | 2.5h | 2.5h | 183.47 | 183.47 | 朱邦杰 | 会议纪要 |  |
| 54 | 3.1.1.1.10 | 甘特图更新 | manual | 1h | 2021-04-05 08:00 A | 2021-04-05 09:00 A | 50FS+4d | 100% |  |  |  |  |  | 刘哲; 牛旷野; 童峻涛; 徐任; 朱邦杰 | 5h | 5h | 366.94 | 366.94 | 牛旷野 | 甘特图 |  |

| ID | WBS | Task | Type | Duration | Start | Finish | Predecessors | Complete | Remaining | Actual start | Actual finish | Constraint | Resources | Work | Actual work | Cost | Actual cost | 负责人 | 输出 |
| --- | --- | --- | --- | --- | --- | --- | --- | --- | --- | --- | --- | --- | --- | --- | --- | --- | --- | --- | --- |
| 55 | 3.1.1.1.11 | **UML基础1** |  | 4d | 2021-04-06 10:00 | 2021-04-09 12:00 | 52 | 88% | 0.5d | 2021-04-08 10:00 |  |  |  | 20h | 17.5h | 1,467.76 | 1,284.29 |  |  |
| 56 | 3.1.1.1.11.1 | 翻转课堂 | manual | 1d | 2021-04-08 10:00 A | 2021-04-08 12:00 A | 52FS+5d | 100% |  |  |  |  | 刘哲; 牛旷野; 童峻涛; 徐任; 朱邦杰 | 10h | 10h | 733.88 | 733.88 | 朱邦杰 | 翻转课堂 |
| 57 | 3.1.1.1.11.2 | 第一次需求访谈 | manual | 1h | 2021-04-09 10:00 A | 2021-04-09 11:00 A | 51FS+4d | 100% |  |  |  |  | 刘哲; 牛旷野; 童峻涛; 徐任; 朱邦杰 | 5h | 5h | 366.94 | 366.94 | 童峻涛 | 访谈报告 |
| 58 | 3.1.1.1.11.3 | 第九次会议 | manual | 1h | 2021-04-09 11:12 A | 2021-04-10 10:12 | 53FS+4d | 50% | 0.5h |  |  |  | 刘哲; 牛旷野; 童峻涛; 徐任; 朱邦杰 | 5h | 2.5h | 366.94 | 183.47 | 朱邦杰 | 会议纪要 |
| 59 | 3.1.2 | **需求分析** |  | 30d | 2021-04-11 10:00 | 2021-05-10 12:00 | 43 | 100% |  | 2021-04-13 10:00 | 2021-04-23 12:00 |  |  | 50h | 50h | 3,670.69 | 3,670.69 |  |  |
| 60 | 3.1.2.1 | **UML基础2** |  | 13d | 2021-04-11 10:00 | 2021-04-23 12:00 A | 43 | 100% |  | 2021-04-13 10:00 |  |  |  | 50h | 50h | 3,670.69 | 3,670.69 |  |  |
| 61 | 3.1.2.1.1 | 创建用户界面以及技术原型 |  | 4h | 2021-04-13 10:00 A | 2021-04-14 12:00 A | 43 | 100% |  |  |  | finish no earlier than 2021-04-14 12:00 | 刘哲; 牛旷野; 童峻涛; 朱邦杰 | 16h | 16h | 1,184.96 | 1,184.96 | 刘哲 | 界面原型初步 |
| 62 | 3.1.2.1.2 | 第十次会议 | manual | 0.2h | 2021-04-15 11:42 A | 2021-04-15 11:54 A | 58FS+6d | 100% |  |  |  |  | 刘哲; 牛旷野; 童峻涛; 徐任; 朱邦杰 | 1h | 1h | 73.39 | 73.39 | 朱邦杰 | 会议纪要 |
| 63 | 3.1.2.1.3 | 改善界面原型 |  | 6h | 2021-04-16 10:00 A | 2021-04-18 12:00 A | 43 | 100% |  |  |  | finish no earlier than 2021-04-18 12:00 | 刘哲 | 6h | 6h | 420 | 420 | 刘哲 | 界面原型完善版 |
| 64 | 3.1.2.1.4 | 翻转课堂 | manual | 1d | 2021-04-16 10:00 A | 2021-04-16 12:00 A | 56FS+7d | 100% |  |  |  |  | 牛旷野; 童峻涛; 徐任; 朱邦杰 | 8h | 8h | 593.88 | 593.88 | 朱邦杰 | 翻转课堂 |
| 65 | 3.1.2.1.5 | 甘特图更新 | manual | 0.5d | 2021-04-19 10:00 A | 2021-04-19 12:00 A | 54FS+14d | 100% |  |  |  |  | 牛旷野 | 1h | 1h | 70.7 | 70.7 | 牛旷野 | 甘特图 |
| 66 | 3.1.2.1.6 | 第十一次会议 | manual | 0.5h | 2021-04-22 10:00 A | 2021-04-22 10:30 A | 62FS+6d | 100% |  |  |  |  | 刘哲; 牛旷野; 童峻涛; 徐任; 朱邦杰 | 2.5h | 2.5h | 183.47 | 183.47 | 朱邦杰 | 会议纪要 |
| 67 | 3.1.2.1.7 | 第二次需求访谈 | manual | 1.5h | 2021-04-21 11:00 A | 2021-04-22 10:30 A | 57FS+12d | 100% |  |  |  |  | 刘哲; 牛旷野; 童峻涛; 徐任; 朱邦杰 | 7.5h | 7.5h | 550.41 | 550.41 | 朱邦杰 | 访谈报告 |
| 68 | 3.1.2.1.8 | 用例图制作 | manual | 1d | 2021-04-23 10:00 A | 2021-04-23 12:00 A | 62FS+5d | 100% |  |  |  |  | 牛旷野; 童峻涛; 徐任; 朱邦杰 | 8h | 8h | 593.88 | 593.88 | 朱邦杰 | 用例图 |
| 69 | 3.1.3 | **需求规格说明** |  | 15d? | 2021-04-26 10:00 A | 2021-05-10 12:00 | 59 | 98% | 0.23d? |  |  |  |  | 56.3h | 53.8h | 4,062.17 | 3,878.7 |  |  |
| 70 | 3.1.3.1 | 数据字典 | manual | 2h | 2021-04-30 10:00 A | 2021-04-30 12:00 A | 59 | 100% |  |  |  |  | 牛旷野; 童峻涛; 徐任; 朱邦杰 | 8h | 8h | 593.88 | 593.88 | 朱邦杰 | 需求文档 |
| 71 | 3.1.3.2 | 界面原型完善 | manual | 2d | 2021-04-26 10:00 A | 2021-04-27 12:00 A | 63FS+7d | 100% |  |  |  |  | 刘哲 | 4h | 4h | 280 | 280 | 朱邦杰 | 界面原型 |
| 72 | 3.1.3.3 | 需求优先级确认 | manual | 2h | 2021-05-01 10:00 A | 2021-05-01 12:00 A | 70 | 100% |  |  |  |  | 牛旷野 | 2h | 2h | 141.4 | 141.4 | 牛旷野 | 需求优先级文档 |
| 73 | 3.1.3.4 | 甘特图更新 | manual | 1h | 2021-04-27 10:00 A | 2021-04-27 12:00 A | 65FS+7d | 100% |  |  |  |  | 牛旷野 | 1h | 1h | 70.7 | 70.7 | 牛旷野 | 甘特图 |
| 74 | 3.1.3.5 | 第十二次会议 | manual | 1.5h | 2021-04-28 10:30 A | 2021-04-28 12:00 A | 66FS+6d | 100% |  |  |  |  | 刘哲; 牛旷野; 童峻涛; 徐任; 朱邦杰 | 7.5h | 7.5h | 550.41 | 550.41 | 朱邦杰 | 会议纪要 |
| 75 | 3.1.3.6 | 第三次需求访谈 | manual | 1d | 2021-04-29 10:00 A | 2021-04-29 12:00 A | 67FS+6d | 100% |  |  |  |  | 刘哲; 牛旷野; 童峻涛; 徐任; 朱邦杰 | 10h | 10h | 733.88 | 733.88 | 牛旷野 | 访谈报告 |
| 76 | 3.1.3.7 | **需求测试用例** |  | 2h? | 2021-05-02 10:00 A | 2021-05-02 12:00 A | 72 | 100% |  |  |  |  |  | 4h | 4h | 282.8 | 282.8 |  |  |
| 77 | 3.1.3.7.1 | 用户+游客需求测试用例 | manual | 1d | 2021-05-02 10:00 A | 2021-05-02 12:00 A | 72 | 100% |  |  |  |  | 童峻涛 | 2h | 2h | 141.4 | 141.4 | 童峻涛 | 测试用例 |
| 78 | 3.1.3.7.2 | 管理员需求测试用例 | manual | 1d | 2021-05-02 10:00 A | 2021-05-02 12:00 A | 72 | 100% |  |  |  |  | 牛旷野 | 2h | 2h | 141.4 | 141.4 | 牛旷野 | 测试用例 |
| 79 | 3.1.3.8 | 顺序图 | manual | 1h | 2021-05-02 10:00 A | 2021-05-02 11:00 A | 72 | 100% |  |  |  |  | 徐任 | 1h | 1h | 70.7 | 70.7 | 徐任 | 顺序图 |
| 80 | 3.1.3.9 | 状态机图 | manual | 1h | 2021-05-02 10:00 A | 2021-05-02 11:00 A | 72 | 100% |  |  |  |  | 徐任 | 1h | 1h | 70.7 | 70.7 | 徐任 | 状态机图 |
| 81 | 3.1.3.10 | 甘特图更新 | manual | 0.5d | 2021-05-03 10:00 A | 2021-05-03 12:00 A | 73FS+5d | 100% |  |  |  |  | 牛旷野 | 1h | 1h | 70.7 | 70.7 | 牛旷野 | 甘特图 |
| 82 | 3.1.3.11 | 需求跟踪矩阵 | manual | 1d | 2021-05-06 10:00 A | 2021-05-06 12:00 A | 72FS+4d | 100% |  |  |  |  | 牛旷野 | 2h | 2h | 141.4 | 141.4 | 牛旷野 | 需求跟踪矩阵 |
| 83 | 3.1.3.12 | 界面原型进一步迭代 | manual | 3d | 2021-05-05 10:00 A | 2021-05-07 12:00 A | 71FS+7d | 100% |  |  |  |  | 刘哲 | 6h | 6h | 420 | 420 | 刘哲 | 界面原型 |
| 84 | 3.1.3.13 | 第十三次会议 | manual | 1h | 2021-05-08 10:00 A | 2021-05-08 11:00 | 74FS+9d | 50% | 0.5h |  |  |  | 刘哲; 牛旷野; 童峻涛; 徐任; 朱邦杰 | 5h | 2.5h | 366.94 | 183.47 | 朱邦杰 | 会议纪要 |
| 85 | 3.1.3.14 | SRS编写 | manual | 3.8h | 2021-05-09 10:00 A | 2021-05-10 11:48 A | 75FS+9d | 100% |  |  |  |  | 童峻涛 | 3.8h | 3.8h | 268.66 | 268.66 | 童峻涛 | SRS |

| ID | WBS | Task | Type | Duration | Start | Finish | Predecessors | Complete | Remaining | Actual start | Actual finish | Total slack | Resources | Work | Actual work | Cost | Actual cost | 负责人 | 输出 |
| --- | --- | --- | --- | --- | --- | --- | --- | --- | --- | --- | --- | --- | --- | --- | --- | --- | --- | --- | --- |
| 86 | 3.1.4 | **需求验证** |  | 18d? | 2021-05-11 10:00 | 2021-05-28 12:00 | 69 | 95% | 0.93d? | 2021-05-08 10:30 |  |  |  | 71.5h | 67.5h | 5,243.21 | 4,949.66 |  |  |
| 87 | 3.1.4.1 | **软件需求的分析技术** |  | 10d? | 2021-05-11 10:00 | 2021-05-20 12:00 | 69 | 92% | 0.84d? | 2021-05-08 10:30 |  |  |  | 41.5h | 37.5h | 3,041.57 | 2,748.02 |  |  |
| 88 | 3.1.4.1.1 | 第十四次会议 | manual | 1h | 2021-05-08 10:30 A | 2021-05-08 11:30 | 84 | 20% | 0.8h |  |  |  | 刘哲; 牛旷野; 童峻涛; 徐任; 朱邦杰 | 5h | 1h | 366.94 | 73.39 | 朱邦杰 | 会议纪要 |
| 89 | 3.1.4.1.2 | 使用需求管理工具 | manual | 1d | 2021-05-12 10:00 A | 2021-05-12 12:00 A | 75FS+12d | 100% |  |  |  |  | 刘哲; 牛旷野; 童峻涛; 徐任; 朱邦杰 | 10h | 10h | 733.88 | 733.88 | 朱邦杰 | 将需求管理工具配置好 |
| 90 | 3.1.4.1.3 | 第十五次会议 | manual | 0.5h | 2021-05-12 10:00 A | 2021-05-12 10:30 A | 88 | 100% |  |  |  |  | 刘哲; 牛旷野; 童峻涛; 徐任; 朱邦杰 | 2.5h | 2.5h | 183.47 | 183.47 | 朱邦杰 | 会议纪要 |
| 91 | 3.1.4.1.4 | 用户手册初版 | manual | 1.5h | 2021-05-11 10:00 A | 2021-05-11 11:30 A | 83FS+3d | 100% |  |  |  |  | 童峻涛 | 1.5h | 1.5h | 106.05 | 106.05 | 童峻涛 | 用户手册 |
| 92 | 3.1.4.1.5 | 第十六次会议纪要 | manual | 0.5h | 2021-05-18 10:00 A | 2021-05-18 10:30 A | 90FS+7d | 100% |  |  |  |  | 刘哲; 牛旷野; 童峻涛; 徐任; 朱邦杰 | 2.5h | 2.5h | 183.47 | 183.47 | 朱邦杰 | 会议纪要 |
| 93 | 3.1.4.1.6 | 需求评审 | manual | 1h | 2021-05-20 10:00 A | 2021-05-20 11:00 A | 69FS+2d | 100% |  |  |  |  | 刘哲; 牛旷野; 童峻涛; 徐任; 朱邦杰 | 5h | 5h | 366.94 | 366.94 | 朱邦杰 | 评审通过 |
| 94 | 3.1.4.1.7 | 召开JAD会议 | manual | 1h | 2021-05-20 11:00 A | 2021-05-20 12:00 A | 93 | 100% |  |  |  |  | 刘哲; 牛旷野; 童峻涛; 徐任; 朱邦杰 | 5h | 5h | 366.94 | 366.94 | 朱邦杰 | JAD会议纪要 |
| 95 | 3.1.4.1.8 | 第十七次会议纪要 | manual | 1d | 2021-05-24 10:00 A | 2021-05-24 12:00 A | 92 | 100% |  |  |  |  | 刘哲; 牛旷野; 童峻涛; 徐任; 朱邦杰 | 10h | 10h | 733.88 | 733.88 | 朱邦杰 | 会议纪要 |
| 96 | 3.1.4.2 | 软件需求的验证与审核（SRS） | manual | 3d | 2021-05-27 10:00 A | 2021-05-29 12:00 A | 87 | 100% |  |  |  |  | 刘哲; 牛旷野; 童峻涛; 徐任; 朱邦杰 | 30h | 30h | 2,201.64 | 2,201.64 |  | 里程碑 |
| 97 | 3.2 | **需求管理** |  | 22d? | 2021-05-30 10:00 A | 2021-06-20 12:00 | 86 | 99% | 0d? |  |  | 0d |  | 65.5h | 64.5h | 4,808.96 | 4,735.57 |  |  |
| 98 | 3.2.1 | **UML基础3** |  | 15d? | 2021-05-30 10:00 A | 2021-06-13 12:00 | 86 | 100% |  |  | 2021-06-04 12:00 |  |  | 22h | 22h | 1,616.58 | 1,616.58 |  |  |
| 99 | 3.2.1.1 | 建立一个需求变更控制流程 | manual | 1.5h | 2021-05-30 10:00 A | 2021-05-30 11:30 A | 86FS+1d | 100% |  |  |  |  | 童峻涛 | 1.5h | 1.5h | 106.05 | 106.05 | 童峻涛 | 需求变更控制 |
| 100 | 3.2.1.2 | 第十八次会议 | manual | 0.5h | 2021-05-30 10:00 A | 2021-05-30 10:30 A | 95 | 100% |  |  |  |  | 刘哲; 牛旷野; 童峻涛; 徐任; 朱邦杰 | 2.5h | 2.5h | 183.47 | 183.47 | 朱邦杰 | 会议纪要 |
| 101 | 3.2.1.3 | 对需求版本进行控制 | manual | 2h | 2021-05-31 10:00 A | 2021-05-31 12:00 A | 99 | 100% |  |  |  |  | 徐任 | 2h | 2h | 141.4 | 141.4 | 徐任 | 需求版本控制 |
| 102 | 3.2.1.4 | 对需求变更进行分析 | manual | 2h | 2021-06-01 10:00 A | 2021-06-01 12:00 A | 101 | 100% |  |  |  |  | 刘哲; 牛旷野; 童峻涛; 徐任; 朱邦杰 | 10h | 10h | 733.88 | 733.88 | 刘哲 | 需求变更分析 |
| 103 | 3.2.1.5 | 维护需求变更的历史记录 | manual | 1h | 2021-06-02 10:00 A | 2021-06-02 11:00 A | 102 | 100% |  |  |  |  | 徐任 | 1h | 1h | 70.7 | 70.7 | 朱邦杰 | 需求变更维护 |
| 104 | 3.2.1.6 | 跟踪每个需求的状态 | manual | 1h | 2021-06-03 10:00 A | 2021-06-03 11:00 A | 103 | 100% |  |  |  |  | 刘哲 | 1h | 1h | 70 | 70 | 刘哲 | 需求状态跟踪 |
| 105 | 3.2.1.7 | 使用需求管理工具 | manual | 2h | 2021-06-04 10:00 A | 2021-06-04 12:00 A | 104FS+1d | 100% |  |  |  |  | 刘哲; 牛旷野; 童峻涛; 徐任; 朱邦杰 | 4h | 4h | 311.08 | 311.08 | 朱邦杰 | 需求管理工具使用 |
| 106 | 3.2.2 | UML基础4（UML基础测试） | manual | 3d | 2021-06-04 10:00 A | 2021-06-06 12:00 A | 98 | 100% |  |  |  |  |  |  |  |  |  |  |  |
| 107 | 3.2.3 | **需求管理（软件需求变更文档）** |  | 6d? | 2021-06-15 10:00 | 2021-06-20 12:00 | 106 | 99% | 0d? | 2021-06-16 10:00 |  |  |  | 36h | 35h | 2,641.97 | 2,568.58 |  |  |
| 108 | 3.2.3.1 | 用户提出变更 | manual | 1h | 2021-06-16 10:00 A | 2021-06-16 11:00 A | 99FS+15d | 100% |  |  |  |  | 刘哲; 牛旷野; 童峻涛; 徐任; 朱邦杰 | 5h | 5h | 366.94 | 366.94 | 朱邦杰 | 需求变更文档 |
| 109 | 3.2.3.2 | 编写CCB章程 | manual | 1h | 2021-06-16 11:00 A | 2021-06-16 12:00 A | 108 | 100% |  |  |  |  | 刘哲; 牛旷野; 童峻涛; 徐任; 朱邦杰 | 5h | 5h | 366.94 | 366.94 | 朱邦杰 | CCB章程 |
| 110 | 3.2.3.3 | 组建CCB委员会 | manual | 1h | 2021-06-17 10:00 A | 2021-06-17 11:00 A | 108 | 100% |  |  |  |  | 刘哲; 牛旷野; 童峻涛; 徐任; 朱邦杰 | 5h | 5h | 366.94 | 366.94 | 朱邦杰 | 委员会成立 |
| 111 | 3.2.3.4 | 进行需求变更影响分析 | manual | 1h | 2021-06-18 11:00 A | 2021-06-18 12:00 A | 108FS+2d | 100% |  |  |  |  | 刘哲; 牛旷野; 童峻涛; 徐任; 朱邦杰 | 5h | 5h | 366.94 | 366.94 | 朱邦杰 | 需求变更影响分析报告 |
| 112 | 3.2.3.5 | 召开CCB会议 | manual | 1d | 2021-06-19 10:00 A | 2021-06-19 12:00 A | 111, 110 | 100% |  |  |  |  | 刘哲; 牛旷野; 童峻涛; 徐任; 朱邦杰 | 10h | 10h | 733.88 | 733.88 | 朱邦杰 | CCB会议纪要 |

| ID | WBS | Task | Type | Duration | Start | Finish | Predecessors | Complete | Remaining | Actual start | Actual finish | Resources | Work | Actual work | Cost | Actual cost | 负责人 | 输出 |
| --- | --- | --- | --- | --- | --- | --- | --- | --- | --- | --- | --- | --- | --- | --- | --- | --- | --- | --- |
| 113 | 3.2.3.6 | **维护相关文档及需求管理工具** |  | 1h | 2021-06-20 10:00 A | 2021-06-20 11:00 | 112, 111 | 99% | 0h |  |  | 刘哲; 牛旷野; 童峻涛; 徐任; 朱邦杰 | 6h | 5h | 440.33 | 366.94 | 朱邦杰 | 相关文档及需求管理工具更新 |
| 114 | 3.2.3.6.1 | 更改功能需求 | manual | 0.2h | 2021-06-20 10:00 A | 2021-06-20 10:12 A | 112, 111 | 100% |  |  |  | 朱邦杰 | 0.2h | 0.2h | 16.97 | 16.97 | 朱邦杰 | 文档更新 |
| 115 | 3.2.3.6.2 | 更改界面原型 | manual | 0.2h | 2021-06-20 10:00 A | 2021-06-20 10:12 A | 112, 111 | 100% |  |  |  | 刘哲 | 0.2h | 0.2h | 14 | 14 | 刘哲 | 界面原型更新 |
| 116 | 3.2.3.6.3 | 更改测试用例 | manual | 0.2h | 2021-06-20 10:00 A | 2021-06-20 10:12 A | 112, 111 | 100% |  |  |  | 徐任 | 0.2h | 0.2h | 14.14 | 14.14 | 徐任 | 文档更新 |
| 117 | 3.2.3.6.4 | 更改用户手册 | manual | 0.2h | 2021-06-20 10:00 A | 2021-06-20 10:12 A | 111, 112 | 100% |  |  |  | 童峻涛 | 0.2h | 0.2h | 14.14 | 14.14 | 童峻涛 | 文档更新 |
| 118 | 3.2.3.6.5 | 需求管理工具更新 | manual | 0.2h | 2021-06-20 10:00 A | 2021-06-20 10:12 A | 111, 112 | 100% |  |  |  | 牛旷野 | 0.2h | 0.2h | 14.14 | 14.14 | 牛旷野 | 需求管理工具更新 |
| 119 | 3.2.4 | 组内进行评审 | manual | 1h | 2021-06-17 10:00 A | 2021-06-17 11:00 A |  | 100% |  |  |  | 刘哲; 牛旷野; 童峻涛; 徐任; 朱邦杰 | 5h | 5h | 366.94 | 366.94 | 朱邦杰 | 组内评审通过 |
| 120 | 3.2.5 | 第十九次会议 | manual | 0.5h | 2021-06-18 10:00 A | 2021-06-18 10:30 A | 119 | 100% |  |  |  | 刘哲; 牛旷野; 童峻涛; 徐任; 朱邦杰 | 2.5h | 2.5h | 183.47 | 183.47 | 朱邦杰 | 会议纪要 |
| 121 | 4 | **项目控制** |  | 10.5d? | 2021-06-21 10:00 A | 2021-07-01 11:00 | 97 | 100% |  |  | 2021-06-22 12:00 |  | 11h | 11h | 804.58 | 804.58 |  |  |
| 122 | 4.1 | **课程作业讲评（文档改进）** |  | 10.5d? | 2021-06-21 10:00 A | 2021-07-01 11:00 | 97 | 100% |  |  | 2021-06-22 12:00 |  | 11h | 11h | 804.58 | 804.58 |  |  |
| 123 | 4.1.1 | 甘特图更新 | manual | 0.5d | 2021-06-21 10:00 A | 2021-06-21 12:00 A | 81 | 100% |  |  |  | 牛旷野 | 1h | 1h | 70.7 | 70.7 | 牛旷野 | 甘特图 |
| 124 | 4.1.2 | 文档维护 | manual | 1d | 2021-06-22 10:00 A | 2021-06-22 12:00 A | 97 | 100% |  |  |  | 刘哲; 牛旷野; 童峻涛; 徐任; 朱邦杰 | 10h | 10h | 733.88 | 733.88 | 朱邦杰 | 文档维护 |
| 125 | 5 | **项目收尾** |  | 12d | 2021-06-21 08:00 | 2021-07-01 12:00 | 121 | 75% | 3d | 2021-06-23 10:00 |  |  | 38h | 30h | 2,765.84 | 2,201.64 |  |  |
| 126 | 5.1 | 项目总结报告 | manual | 6h | 2021-06-23 10:00 A | 2021-06-25 12:00 A | 121 | 100% |  |  |  | 刘哲; 牛旷野; 童峻涛; 徐任; 朱邦杰 | 30h | 30h | 2,201.64 | 2,201.64 | 朱邦杰 | 项目总结报告 |
| 127 | 5.2 | 项目总评 | milestone, manual | 2h | 2021-07-01 10:00 | 2021-07-02 12:00 | 126 |  |  |  |  | 刘哲; 牛旷野; 童峻涛; 徐任; 朱邦杰 | 8h |  | 564.2 |  | 朱邦杰 | 总评通过 |
